# planingIni

Schedule from MS Project, 2018-05-15 to 2018-06-12, A marks actual dates.
CPNV

## Calendars

- Standard: Mon off; Tue 10:40-12:15, 13:30-15:05, 15:20-16:05; Wed-Thu 08:00-09:35, 09:50-12:15, 13:30-15:05, 15:20-16:55; Fri 08:00-09:35, 09:50-12:15, 13:30-15:05; Sat-Sun off.

## Schedule

| ID | WBS | Task | Type | Duration | Start | Finish | Predecessors | Complete | Remaining | Total slack | Free slack |
| --- | --- | --- | --- | --- | --- | --- | --- | --- | --- | --- | --- |
| 1 | 1 | Début | milestone, manual | 0d | 2018-05-15 09:00 | 2018-05-15 09:00 |  |  |  |  |  |
| 2 | 2 | **Analyse** |  | 2.5d | 2018-05-15 10:40 A | 2018-05-18 10:00 | 1 | 94% | 0.14d | 0d |  |
| 3 | 2.1 | Planification initiale |  | 2h | 2018-05-15 10:40 A | 2018-05-15 13:55 A | 1 | 100% |  |  |  |
| 4 | 2.2 | Documentation (introduction) |  | 3h | 2018-05-15 12:10 A | 2018-05-16 08:35 A | 3 | 100% |  |  |  |
| 5 | 2.3 | Analyse du cdc |  | 2h | 2018-05-15 15:40 A | 2018-05-16 09:35 | 4 | 75% | 0.5h | 1.81d |  |
| 6 | 2.4 | Stratégie de test |  | 2h | 2018-05-16 09:05 A | 2018-05-16 11:20 A | 5 | 100% |  |  |  |
| 7 | 2.5 | **Concpetion** |  | 1.25d | 2018-05-16 11:20 A | 2018-05-17 15:40 A | 6 | 100% |  |  |  |
| 8 | 2.5.1 | Diagramme interaction |  | 1h | 2018-05-16 11:20 A | 2018-05-16 13:35 A | 6 | 100% |  |  |  |
| 9 | 2.5.2 | diagramme code Arduino |  | 3h | 2018-05-16 13:35 A | 2018-05-16 16:50 A | 8 | 100% |  |  |  |
| 10 | 2.5.3 | Diagramme de code Application |  | 4h | 2018-05-16 16:50 A | 2018-05-17 12:10 A | 9 | 100% |  |  |  |
| 11 | 2.5.4 | Schéma montage Arduino |  | 2h | 2018-05-17 12:10 A | 2018-05-17 15:40 A | 10 | 100% |  |  |  |
| 12 | 2.6 | Rédaction Documentation |  | 3h | 2018-05-17 15:40 A | 2018-05-18 10:00 | 7 | 75% | 0.75h | 0d |  |
| 13 | 3 | **Implémentation** |  | 5.75d | 2018-05-18 10:00 A | 2018-06-01 08:05 | 2 | 46% | 3.12d | 1.42d | 0d |
| 14 | 3.1 | **Recherches Skype** |  | 2.25d | 2018-05-18 10:00 A | 2018-05-24 11:20 A | 12 | 100% |  |  |  |
| 15 | 3.1.1 | Recherche API Skype |  | 4h | 2018-05-18 10:00 A | 2018-05-22 10:50 A | 12 | 100% |  |  |  |
| 16 | 3.1.2 | Installation Skype |  | 4h | 2018-05-22 10:50 A | 2018-05-23 08:15 A | 15 | 100% |  |  |  |
| 17 | 3.1.3 | Recherche Connecteur C#-Skype |  | 3h | 2018-05-23 08:15 A | 2018-05-23 11:30 A | 16 | 100% |  |  |  |
| 18 | 3.1.4 | Recherche récupèrer statut Skype |  | 2h | 2018-05-23 11:30 A | 2018-05-23 14:45 A | 17 | 100% |  |  |  |
| 19 | 3.1.5 | Changer statut skype |  | 2h | 2018-05-23 14:45 A | 2018-05-24 08:05 A | 18 | 100% |  |  |  |
| 20 | 3.1.6 | Recherche détéction d'erreur Skype |  | 3h | 2018-05-24 08:05 A | 2018-05-24 11:20 A | 19 | 100% |  |  |  |
| 21 | 3.2 | Assemblage Arduino |  | 3h | 2018-05-24 11:20 A | 2018-05-24 15:50 A | 14 | 100% |  |  |  |
| 22 | 3.3 | Code Arduino |  | 4h | 2018-05-24 15:50 | 2018-05-25 11:10 | 21 |  |  | 1.42d | 0d |
| 23 | 3.4 | Code application |  | 4h | 2018-05-25 11:10 | 2018-05-29 12:00 | 22 |  |  | 1.42d | 0d |
| 24 | 3.5 | Tests Relation Arduino-Application |  | 2h | 2018-05-29 12:00 | 2018-05-29 15:30 | 23 |  |  | 1.42d | 0d |
| 25 | 3.6 | Corrections |  | 4h | 2018-05-29 15:30 | 2018-05-30 11:40 | 24 |  |  | 1.42d | 0d |

| ID | WBS | Task | Type | Duration | Start | Finish | Predecessors | Total slack | Free slack |
| --- | --- | --- | --- | --- | --- | --- | --- | --- | --- |
| 26 | 3.7 | **Code Skype** |  | 0.88d | 2018-05-30 11:40 | 2018-05-31 11:30 | 25 | 1.42d |  |
| 27 | 3.7.1 | Connexion Skype |  | 3h | 2018-05-30 11:40 | 2018-05-30 16:10 | 25 | 1.42d | 0d |
| 28 | 3.7.2 | Récupèration statut |  | 2h | 2018-05-30 16:10 | 2018-05-31 09:15 | 27 | 1.42d | 0d |
| 29 | 3.7.3 | Changement statut |  | 2h | 2018-05-31 09:15 | 2018-05-31 11:30 | 28 | 1.42d | 0d |
| 30 | 3.8 | Test et Debug Skype |  | 4h | 2018-05-31 11:30 | 2018-06-01 08:05 | 29 | 1.42d |  |
| 31 | 4 | **Tests et corrections** |  | 1.25d | 2018-06-01 08:05 | 2018-06-06 08:35 | 13 | 1.42d |  |
| 32 | 4.1 | Tests complets |  | 3h | 2018-06-01 08:05 | 2018-06-01 11:20 | 13 | 1.42d | 0d |
| 33 | 4.2 | Debug complet |  | 3h | 2018-06-01 11:20 | 2018-06-05 11:10 | 32 | 1.42d | 0d |
| 34 | 4.3 | Test complets |  | 2h | 2018-06-05 11:10 | 2018-06-05 14:25 | 33 | 1.42d | 0d |
| 35 | 4.4 | Documentation (tests) |  | 2h | 2018-06-05 14:25 | 2018-06-06 08:35 | 34 | 1.42d | 0d |
| 36 | 5 | Documentation (fin rédaction) |  | 4h | 2018-06-06 08:35 | 2018-06-06 14:05 | 35 | 1.42d | 0d |
| 37 | 6 | Documentation (finalisation) |  | 4h | 2018-06-06 14:05 | 2018-06-07 09:25 | 36 | 1.42d |  |
| 38 | 7 | Fin | milestone, manual | 0d | 2018-06-12 09:00 | 2018-06-12 09:00 |  |  |  |
